# Assignment 4

Schedule from MS Project, 2023-06-01 to 2024-03-25, status date 2023-08-08, costs in $.

## Calendars

- Standard: Mon-Fri 08:00-12:00, 13:00-17:00; Sat-Sun off.

## Resources

| Resource | Group | Unit | Rate |
| --- | --- | --- | --- |
| Project Manager | emp |  | 150 |
| Site Superintendent | emp |  | 100 |
| General Labourer | emp |  | 40 |
| ABC Plumbing | sub |  |  |
| DEF HVAC | sub |  |  |
| GHI Electrical | sub |  |  |
| Drywall | sup | sq.ft | 10 |
| Nikesh | emp |  | 75 |
| Pradip | emp |  | 70 |
| Rojohn | emp |  | 75 |
| Maurvi | emp |  | 75 |
| Paulina | emp |  | 70 |
| Carpenter | emp |  | 50 |
| Electrician | emp |  | 50 |
| Network administrator |  |  | 100 |
| System administrator |  |  | 120 |
| Technician |  |  | 70 |
| Licenses |  |  | 1000 |
| OS software |  |  | 1200 |

## Schedule

| ID | WBS | Task | Type | Duration | Start | Finish | Predecessors | Total slack | Free slack | Constraint | Resources | Work | Cost |
| --- | --- | --- | --- | --- | --- | --- | --- | --- | --- | --- | --- | --- | --- |
| 1 | 1 | **Wards** |  | 183d | 2023-06-01 | 2024-02-12 |  | 7d |  |  | Project Manager [50%] | 2512.8h | 214,392 |
| 2 | 1.1 | **Emergency Ward** |  | 39d | 2023-06-01 | 2023-07-25 |  | 7d |  |  |  | 312h | 18,400 |
| 3 | 1.1.1 | Create Patient Triage Station |  | 12d | 2023-06-01 | 2023-06-16 |  | 7d | 0d |  | General Labourer; Pradip | 96h | 6,720 |
| 4 | 1.1.2 | Set-up Ward |  | 10d | 2023-06-16 | 2023-06-30 | 3 | 7d | 0d |  | Pradip; General Labourer | 80h | 5,600 |
| 5 | 1.1.3 | Set-up Nurses Station |  | 9d | 2023-06-30 | 2023-07-13 | 4 | 7d | 0d |  | Pradip; General Labourer | 72h | 2,880 |
| 6 | 1.1.4 | Furnish Ward |  | 8d | 2023-07-14 | 2023-07-25 | 5 | 7d | 0d |  | Carpenter | 64h | 3,200 |
| 7 | 1.1.5 | Inspection approved | milestone | 0d | 2023-07-25 | 2023-07-25 | 6 | 7d | 0d |  |  |  |  |
| 8 | 1.2 | **ICU** |  | 33d | 2023-07-26 | 2023-09-08 |  | 7d |  |  |  | 264h | 20,800 |
| 9 | 1.2.1 | Set-up Ward |  | 18d | 2023-07-26 | 2023-08-18 | 7 | 7d | 0d | start no earlier than 2023-07-13 | Rojohn | 144h | 10,800 |
| 10 | 1.2.2 | Set-up Nurses Station |  | 10d | 2023-08-21 | 2023-09-01 | 9 | 7d | 0d |  | Site Superintendent | 80h | 8,000 |
| 11 | 1.2.3 | Furnish Ward |  | 5d | 2023-09-04 | 2023-09-08 | 10 | 7d | 0d |  | Carpenter | 40h | 2,000 |
| 12 | 1.3 | **Medicine Ward** |  | 28d | 2023-09-11 | 2023-10-18 |  | 7d |  |  |  | 228.8h | 12,512 |
| 13 | 1.3.1 | Set-up Ward |  | 12d | 2023-09-11 | 2023-09-26 | 11 | 7d | 0d |  | Paulina; General Labourer | 100.8h | 6,912 |
| 14 | 1.3.2 | Set-up Nurses Station |  | 10d | 2023-09-27 | 2023-10-10 | 13 | 7d | 0d |  | General Labourer | 80h | 3,200 |
| 15 | 1.3.3 | Furnish Ward |  | 6d | 2023-10-11 | 2023-10-18 | 14 | 7d | 0d |  | Carpenter | 48h | 2,400 |
| 16 | 1.4 | **General Ward** |  | 30d | 2023-10-19 | 2023-11-29 |  | 7d |  |  |  | 336h | 17,440 |
| 17 | 1.4.1 | Set-up Ward |  | 12d | 2023-10-19 | 2023-11-03 | 15 | 7d | 0d |  | Rojohn; General Labourer | 192h | 11,040 |
| 18 | 1.4.2 | Set-up Nurses Station |  | 10d | 2023-11-06 | 2023-11-17 | 17 | 7d | 0d |  | General Labourer | 80h | 3,200 |
| 19 | 1.4.3 | Furnish Ward |  | 8d | 2023-11-20 | 2023-11-29 | 18 | 7d | 0d |  | Carpenter | 64h | 3,200 |
| 20 | 1.5 | **Orthopedic Ward** |  | 27d | 2023-11-30 | 2024-01-05 |  | 7d |  |  |  | 384h | 21,360 |
| 21 | 1.5.1 | Set-up Ward |  | 12d | 2023-11-30 | 2023-12-15 | 19 | 7d | 0d |  | General Labourer; Maurvi | 192h | 11,040 |
| 22 | 1.5.2 | Set-up Nurses Station |  | 9d | 2023-12-18 | 2023-12-28 | 21 | 7d | 0d |  | Paulina; General Labourer | 144h | 7,920 |
| 23 | 1.5.3 | Furnish Ward |  | 6d | 2023-12-29 | 2024-01-05 | 22 | 7d | 0d |  | Carpenter | 48h | 2,400 |
| 24 | 1.6 | **Paediatric Ward** |  | 26d | 2024-01-08 | 2024-02-12 |  | 7d |  |  |  | 256h | 14,080 |
| 25 | 1.6.1 | Set-up Ward |  | 12d | 2024-01-08 | 2024-01-23 | 23 | 7d | 0d |  | Rojohn | 96h | 7,200 |
| 26 | 1.6.2 | Set-up Nurses Station |  | 8d | 2024-01-24 | 2024-02-02 | 25 | 7d | 0d |  | General Labourer | 64h | 2,560 |
| 27 | 1.6.3 | Furnish Ward |  | 6d | 2024-02-05 | 2024-02-12 | 26 | 7d | 0d |  | Carpenter; General Labourer | 96h | 4,320 |
| 28 | 1.7 | Final Inspection | milestone | 0d | 2024-02-12 | 2024-02-12 | 27 | 7d |  |  |  |  |  |

| ID | WBS | Task | Type | Duration | Start | Finish | Predecessors | Total slack | Resources | Work | Cost |
| --- | --- | --- | --- | --- | --- | --- | --- | --- | --- | --- | --- |
| 29 | 2 | **Speciality Rooms** |  | 92d | 2023-06-01 | 2023-10-06 |  | 0d |  | 920h | 55,960 |
| 30 | 2.1 | **X-ray Room** |  | 26d | 2023-06-01 | 2023-07-06 |  | 0d |  | 320h | 16,720 |
| 31 | 2.1.1 | Set up Room |  | 14d | 2023-06-01 | 2023-06-20 |  | 0d | Nikesh; General Labourer | 224h | 12,880 |
| 32 | 2.1.2 | Install Equipment |  | 12d | 2023-06-21 | 2023-07-06 | 31 | 0d | General Labourer | 96h | 3,840 |
| 33 | 2.2 | **CT Scan Room** |  | 25d | 2023-07-07 | 2023-08-10 |  | 0d |  | 200h | 11,360 |
| 34 | 2.2.1 | Set up Room |  | 14d | 2023-07-07 | 2023-07-26 | 32 | 0d | Pradip | 112h | 7,840 |
| 35 | 2.2.2 | Install Equipment |  | 11d | 2023-07-27 | 2023-08-10 | 34 | 0d | General Labourer | 88h | 3,520 |
| 36 | 2.3 | **Blood Works Lab** |  | 19d | 2023-08-11 | 2023-09-06 |  | 0d |  | 144h | 13,480 |
| 37 | 2.3.1 | Set up Room |  | 10d | 2023-08-11 | 2023-08-24 | 35 | 0d | Drywall [200 sq.ft]; ABC Plumbing [0.1%] |  | 7,000 |
| 38 | 2.3.2 | Install Equipment |  | 9d | 2023-08-25 | 2023-09-06 | 37 | 0d | Electrician; General Labourer | 144h | 6,480 |
| 39 | 2.4 | **ECG** |  | 22d | 2023-09-07 | 2023-10-06 |  | 0d |  | 256h | 14,400 |
| 40 | 2.4.1 | Set up Room |  | 12d | 2023-09-07 | 2023-09-22 | 38 | 0d | Maurvi | 96h | 7,200 |
| 41 | 2.4.2 | Install Equipment |  | 10d | 2023-09-25 | 2023-10-06 | 40 | 0d | Electrician; General Labourer | 160h | 7,200 |
| 42 | 2.4.3 | Final inspection | milestone | 0d | 2023-10-06 | 2023-10-06 | 41 | 98d |  |  |  |
| 43 | 3 | **IT Systems** |  | 98d | 2023-10-09 | 2024-02-21 |  | 0d |  | 1088h | 89,880 |
| 44 | 3.1 | **Server room + Networking** |  | 27d | 2023-10-09 | 2023-11-14 |  | 0d |  | 216h | 22,400 |
| 45 | 3.1.1 | Install Network |  | 12d | 2023-10-09 | 2023-10-24 | 41 | 0d | Network administrator; Licenses [200%] | 96h | 11,600 |
| 46 | 3.1.2 | Install Hardware |  | 10d | 2023-10-25 | 2023-11-07 | 45 | 0d | Technician | 80h | 5,600 |
| 47 | 3.1.3 | Install Software |  | 5d | 2023-11-08 | 2023-11-14 | 46 | 0d | Technician; OS software [200%] | 40h | 5,200 |
| 48 | 3.2 | **Computers** |  | 14d | 2023-11-15 | 2023-12-04 |  | 0d |  | 192h | 26,440 |
| 49 | 3.2.1 | Install Computers |  | 10d | 2023-11-15 | 2023-11-28 | 47 | 0d | System administrator; Technician | 160h | 15,200 |
| 50 | 3.2.2 | Install OS |  | 4d | 2023-11-29 | 2023-12-04 | 49 | 0d | Technician; Licenses [300%]; OS software [500%] | 32h | 11,240 |
| 51 | 3.3 | **Communications Systems** |  | 32d | 2023-12-05 | 2024-01-17 |  | 0d |  | 320h | 21,120 |
| 52 | 3.3.1 | Install telephones |  | 8d | 2023-12-05 | 2023-12-14 | 50 | 0d | Technician | 64h | 4,480 |
| 53 | 3.3.2 | Install Public Address system |  | 9d | 2023-12-15 | 2023-12-27 | 52 | 0d | Technician | 72h | 5,040 |
| 54 | 3.3.3 | Connect phones |  | 7d | 2023-12-28 | 2024-01-05 | 53 | 0d | Technician | 56h | 3,920 |
| 55 | 3.3.4 | Set up Comms Control Room |  | 8d | 2024-01-08 | 2024-01-17 | 54 | 0d | Electrician; Technician | 128h | 7,680 |

| ID | WBS | Task | Type | Duration | Start | Finish | Predecessors | Total slack | Free slack | Resources | Work | Cost |
| --- | --- | --- | --- | --- | --- | --- | --- | --- | --- | --- | --- | --- |
| 56 | 3.4 | **Security Systems** |  | 25d | 2024-01-18 | 2024-02-21 |  | 0d |  |  | 360h | 19,920 |
| 57 | 3.4.1 | Install Security Cameras |  | 10d | 2024-01-18 | 2024-01-31 | 55 | 0d |  | Electrician; General Labourer; Technician | 240h | 12,800 |
| 58 | 3.4.2 | Install Fire Alarms |  | 8d | 2024-02-01 | 2024-02-12 | 57 | 0d |  | Electrician | 64h | 3,200 |
| 59 | 3.4.3 | Install Secure access on doors |  | 7d | 2024-02-13 | 2024-02-21 | 58 | 0d |  | Technician | 56h | 3,920 |
| 60 | 3.4.4 | Configuration and customization | milestone | 0d | 2024-02-21 | 2024-02-21 | 59 | 0d |  |  |  |  |
| 61 | 4 | **Ambulance Station** |  | 39d | 2023-06-01 | 2023-07-25 |  | 151d |  |  | 312h | 21,600 |
| 62 | 4.1 | Ambulance Parking |  | 13d | 2023-06-01 | 2023-06-19 |  | 151d | 0d | Site Superintendent | 104h | 10,400 |
| 63 | 4.2 | Paramedic Station |  | 12d | 2023-06-20 | 2023-07-05 | 62 | 151d | 0d | Paulina | 96h | 6,720 |
| 64 | 4.3 | Stores for Ambulance Provisions |  | 14d | 2023-07-06 | 2023-07-25 | 63 | 151d |  | General Labourer | 112h | 4,480 |
| 65 | 5 | **Signages** |  | 23d | 2024-02-22 | 2024-03-25 |  | 0d |  |  | 352h | 28,000 |
| 66 | 5.1 | **Indoor Signages** |  | 9d | 2024-02-22 | 2024-03-05 |  | 0d |  |  | 72h | 4,000 |
| 67 | 5.1.1 | Install Indoor Signages |  | 5d | 2024-02-22 | 2024-02-28 | 43, 1, 61, 29 | 0d |  | General Labourer; GHI Electrical [0.1%] | 40h | 1,600 |
| 68 | 5.1.2 | Power Indoor Signages |  | 4d | 2024-02-29 | 2024-03-05 | 67 | 0d |  | Rojohn; GHI Electrical [0.1%] | 32h | 2,400 |
| 69 | 5.2 | **Outdoor Signages** |  | 14d | 2024-03-06 | 2024-03-25 |  | 0d |  |  | 280h | 24,000 |
| 70 | 5.2.1 | Install Outdoor Signages |  | 7d | 2024-03-06 | 2024-03-14 | 68 | 0d |  | Pradip; General Labourer; Electrician | 168h | 8,960 |
| 71 | 5.2.2 | Power Outdoor Signages |  | 7d | 2024-03-15 | 2024-03-25 | 70 | 0d |  | Electrician; GHI Electrical [0.1%]; General Labourer | 112h | 15,040 |
| 72 | 5.2.3 | Detail report | milestone | 0d | 2024-03-25 | 2024-03-25 | 71 | 0d |  |  |  |  |
